# 05_Plan de trabajo_23-MAYO_2022 (ECUJEP-22)

Schedule from MS Project, 2022-12-01 to 2023-04-25, status date 2020-05-14, A marks actual dates.

## Calendars

- Estándar: Mon-Fri 09:00-13:00, 15:00-19:00; Sat-Sun off. Exceptions (off unless hours are given): 2023-04-03 to 2023-04-07 (Semana Santa).

## Resources

| Resource |
| --- |
| Banco BDI |
| SS_PM |
| SS_Experto Técnico |
| SS - Calidad |
| Experto Integraciones |

## Schedule

| ID | WBS | Task | Type | Duration | Start | Finish | Predecessors | Complete | Remaining | Total slack | Constraint | Resources | Work | Actual work |
| --- | --- | --- | --- | --- | --- | --- | --- | --- | --- | --- | --- | --- | --- | --- |
| 1 | 1 | **Incluir Monitoreo Banca Móvil y Banca Electrónica + GEO** |  | 98.75d? | 2022-12-01 09:00 A | 2023-04-25 17:00 |  | 71% | 28.61d? | 0d |  |  | 680.25h | 463.25h |
| 2 | 1.1 | **PLANEACION** |  | 33.19d? | 2022-12-01 09:00 A | 2023-01-17 10:30 A |  | 100% |  |  |  |  | 30h | 30h |
| 3 | 1.1.1 | Sesión passdown de negocio |  | 1h | 2022-12-01 09:00 A | 2022-12-01 10:00 A |  | 100% |  |  |  | SS_Experto Técnico; SS_PM | 2h | 2h |
| 4 | 1.1.2 | **Reunión preliminar con el equipo de proyecto** |  | 0.19d | 2022-12-01 10:00 A | 2022-12-01 11:30 A |  | 100% |  |  |  |  | 2h | 2h |
| 5 | 1.1.2.1 | Presentación de equipos y responsables |  | 1h | 2022-12-01 10:00 A | 2022-12-01 11:00 A | 3 | 100% |  |  |  | SS_PM | 1h | 1h |
| 6 | 1.1.2.2 | Revisión de pre-requisitos y requisitos de seguridad obligatorios |  | 0.5h | 2022-12-01 11:00 A | 2022-12-01 11:30 A | 5 | 100% |  |  |  | SS_Experto Técnico; Banco BDI | 1h | 1h |
| 7 | 1.1.3 | Envío de matrices (responsables y escalamiento) |  | 0.5h | 2022-12-01 11:00 A | 2022-12-01 11:30 A | 5 | 100% |  |  |  | SS_PM | 0.5h | 0.5h |
| 8 | 1.1.4 | Entrega matrices completadas (responsables y escalamiento) |  | 1d? | 2022-12-01 11:30 A | 2022-12-02 11:30 A | 7 | 100% |  |  |  | Banco BDI | 8h | 8h |
| 9 | 1.1.5 | Creación de Matriz de Riesgos de Proyecto |  | 1h | 2022-12-01 11:30 A | 2022-12-01 12:30 A | 4 | 100% |  |  |  | SS_PM | 1h | 1h |
| 10 | 1.1.6 | Preparación plan de trabajo |  | 3h | 2023-01-11 09:00 A | 2023-01-11 12:00 A | 4 | 100% |  |  | start no earlier than 2023-01-11 09:00 | SS_PM | 3h | 3h |
| 11 | 1.1.7 | Sesión validación y ajustes del plan de trabajo |  | 1h | 2023-01-11 12:00 A | 2023-01-11 13:00 A | 10 | 100% |  |  |  | Banco BDI; SS_PM | 2h | 2h |
| 12 | 1.1.8 | Envío de acta de aprobación del plan de trabajo | milestone | 0h | 2023-01-16 09:00 A | 2023-01-16 09:00 A | 11 | 100% |  |  | start no earlier than 2023-01-16 09:00 | SS_PM |  |  |
| 13 | 1.1.9 | Aprobación plan de trabajo |  | 1d | 2023-01-16 09:00 A | 2023-01-16 19:00 A | 12 | 100% |  |  | finish no earlier than 2023-01-16 19:00 | Banco BDI | 8h | 8h |
| 14 | 1.1.10 | Plan de trabajo aprobado | milestone | 0h | 2023-01-16 19:00 A | 2023-01-16 19:00 A | 13 | 100% |  |  |  |  |  |  |
| 15 | 1.1.11 | Reunión de KickOff |  | 1h | 2023-01-17 09:00 A | 2023-01-17 10:00 A | 14, 38 | 100% |  |  |  | Banco BDI; SS_Experto Técnico; SS_PM | 3h | 3h |
| 16 | 1.1.12 | Control de Calidad - Inspección Planeación |  | 0.5h | 2023-01-17 10:00 A | 2023-01-17 10:30 A | 15 | 100% |  |  |  | SS - Calidad | 0.5h | 0.5h |
| 17 | 1.2 | **EJECUCION Y CONTROL** |  | 69.75d? | 2023-01-11 09:00 A | 2023-04-25 17:00 |  | 70% | 20.75d? | 0d |  |  | 646.75h | 433.25h |
| 18 | 1.2.1 | **AMBIENTE DESARROLLO** |  | 65d? | 2023-01-11 09:00 A | 2023-04-18 19:00 |  | 82% | 11.99d? | 4.75d |  |  | 547.75h | 433.25h |
| 19 | 1.2.1.1 | Preparar conexiones y ambiente de Desarrollo |  | 4d | 2023-01-11 09:00 A | 2023-01-16 19:00 A |  | 100% |  |  | finish no earlier than 2023-01-16 19:00 | Banco BDI | 32h | 32h |
| 20 | 1.2.1.2 | Otorgar accesos / Credenciales VPN |  | 4d | 2023-01-11 09:00 A | 2023-01-16 19:00 A |  | 100% |  |  | finish no earlier than 2023-01-16 19:00 | Banco BDI | 32h | 32h |
| 21 | 1.2.1.3 | Generar Backup ambiente productivo y restaurar en ambiente Desarrollo |  | 4d | 2023-01-11 09:00 A | 2023-01-16 19:00 A |  | 100% |  |  | finish no earlier than 2023-01-16 19:00 | Banco BDI | 32h | 32h |
| 22 | 1.2.1.4 | Revisión del ambiente |  | 4h | 2023-01-17 09:00 A | 2023-01-17 13:00 A | 21 | 100% |  |  |  | SS_Experto Técnico | 4h | 4h |
| 23 | 1.2.1.5 | Apoyo en definición de mapeo de datos Banca Móvil y Banca Electrónica |  | 12h | 2023-01-19 09:00 A | 2023-01-31 19:00 A | 14, 38 | 100% |  |  | finish no earlier than 2023-01-31 19:00 | Banco BDI; SS_Experto Técnico | 24h | 24h |
| 24 | 1.2.1.6 | Envío de acta de aprobación de mapeo de datos | milestone | 0h | 2023-02-03 09:00 A | 2023-02-03 09:00 A | 23 | 100% |  |  | start no earlier than 2022-08-24 08:00 | SS_Experto Técnico |  |  |
| 25 | 1.2.1.7 | Aprobación de mapeo de datos |  | 13d | 2023-02-03 09:00 A | 2023-02-21 19:00 A | 24 | 100% |  |  | finish no earlier than 2023-02-21 19:00 | Banco BDI | 104h | 104h |
| 26 | 1.2.1.8 | Desarrollo de procesos de extracción a BD Intermedia |  | 9d | 2023-02-07 09:00 A | 2023-02-17 19:00 A | 25, 31 | 100% |  |  | finish no earlier than 2023-02-21 19:00 | Banco BDI | 72h | 72h |
| 27 | 1.2.1.9 | Apoyo en desarrollo de procesos de consolidación |  | 24h | 2023-02-22 09:00 A | 2023-02-24 19:00 A | 26 | 100% |  |  | finish no earlier than 2023-02-27 19:00 | SS_Experto Técnico [50%] | 12h | 12h |
| 28 | 1.2.1.10 | Configuración Grupo de trabajo - Trama Datos |  | 8h | 2023-02-28 09:00 A | 2023-02-28 19:00 A | 27, 37, 36 | 100% |  |  | start no earlier than 2023-02-22 09:00 | SS_Experto Técnico [50%] | 4h | 4h |

| ID | WBS | Task | Type | Duration | Start | Finish | Predecessors | Complete | Remaining | Total slack | Free slack | Constraint | Resources | Work | Actual work |
| --- | --- | --- | --- | --- | --- | --- | --- | --- | --- | --- | --- | --- | --- | --- | --- |
| 29 | 1.2.1.11 | **Control de Cambios 1: Ajustes mapeo de datos y tramas GEO** |  | 8d | 2023-03-13 09:00 A | 2023-03-22 19:00 A |  | 100% |  |  |  |  |  | 85.25h | 85.25h |
| 30 | 1.2.1.11.1 | Envío documento control de cambios | milestone | 0h | 2023-03-13 09:00 A | 2023-03-13 09:00 A |  | 100% |  |  |  | start no earlier than 2022-08-24 08:00 | SS_Experto Técnico |  |  |
| 31 | 1.2.1.11.2 | Aprobación documento control de cambios |  | 3d | 2023-03-13 09:00 A | 2023-03-15 19:00 A | 30 | 100% |  |  |  | finish no earlier than 2023-02-21 19:00 | Banco BDI | 24h | 24h |
| 32 | 1.2.1.11.3 | Actualización de réplicas según ajuste al mapeo de datos |  | 1d | 2023-03-15 09:00 A | 2023-03-15 19:00 A | 31 | 100% |  |  |  | finish no earlier than 2023-01-16 19:00 | Banco BDI | 8h | 8h |
| 33 | 1.2.1.11.4 | Agregar información de TRX monetarias al mapeo de datos |  | 0.5h | 2023-03-15 09:00 A | 2023-03-15 09:30 A | 32 | 100% |  |  |  |  | SS_Experto Técnico | 0.5h | 0.5h |
| 34 | 1.2.1.11.5 | Aprobación del mapeo de datos (BDI) |  | 6d | 2023-03-15 09:00 A | 2023-03-22 19:00 A | 33 | 100% |  |  |  | finish no earlier than 2023-03-22 19:00 | Banco BDI | 48h | 48h |
| 35 | 1.2.1.11.6 | Modificación de la trama "trama_banco" |  | 2h | 2023-03-16 09:00 A | 2023-03-16 11:00 A | 34 | 100% |  |  |  | finish no earlier than 2023-01-31 19:00 | Banco BDI; SS_Experto Técnico | 4h | 4h |
| 36 | 1.2.1.11.7 | Creación de la réplica de cargue datos geolocalización en "trama_banco" |  | 1h | 2023-03-16 09:00 A | 2023-03-16 10:00 A | 35 | 100% |  |  |  | finish no earlier than 2023-02-27 19:00 | SS_Experto Técnico [50%] | 0.5h | 0.5h |
| 37 | 1.2.1.11.8 | Pruebas de funcionamiento |  | 0.5h | 2023-03-16 09:00 A | 2023-03-16 09:30 A | 36 | 100% |  |  |  | finish no earlier than 2023-02-27 19:00 | SS_Experto Técnico [50%] | 0.25h | 0.25h |
| 38 | 1.2.1.11.9 | Control de Cambios 1 finalizado | milestone | 0h | 2023-03-21 09:00 A | 2023-03-21 09:00 A | 37, 33 | 100% |  |  |  |  |  |  |  |
| 39 | 1.2.1.12 | Pruebas unitarias y ajustes |  | 16h | 2023-03-17 09:00 A | 2023-04-10 19:00 | 37 | 50% | 8h | 0.25d | 0d | finish no earlier than 2023-04-10 19:00 | SS_Experto Técnico [50%] | 8h | 4h |
| 40 | 1.2.1.13 | **Instalación y configuración Servicio de Geolocalización** |  | 53.5d | 2023-01-17 09:00 A | 2023-03-31 13:00 |  | 33% | 35.67d | 1.75d |  |  |  | 60h | 20h |
| 41 | 1.2.1.13.1 | Apoyo en definición de mapeo de datos Geolocalización |  | 2h | 2023-01-17 09:00 A | 2023-02-03 19:00 A | 14, 38 | 100% |  |  |  | finish no earlier than 2023-02-20 19:00 | Banco BDI; SS_Experto Técnico | 4h | 4h |
| 42 | 1.2.1.13.2 | Agregar procedimiento para procesamiento de campos de Geolocalización |  | 4h | 2023-02-23 09:00 A | 2023-02-23 13:00 A | 41, 26, 62 | 100% |  |  |  | start no earlier than 2023-02-22 09:00 | Banco BDI; SS_Experto Técnico | 8h | 8h |
| 43 | 1.2.1.13.3 | Creación / Actualización de trama con campos de Geolocalización |  | 4h | 2023-03-01 09:00 A | 2023-03-01 13:00 A | 42 | 100% |  |  |  | start no earlier than 2023-03-01 09:00 | Banco BDI; SS_Experto Técnico | 8h | 8h |
| 44 | 1.2.1.13.4 | Instalación y configuración Geolocalización |  | 16h | 2023-03-29 09:00 | 2023-03-30 19:00 | 43, 38 |  |  | 1.75d | 0d | start no earlier than 2023-03-29 09:00 | Banco BDI; Experto Integraciones | 32h |  |
| 45 | 1.2.1.13.5 | Pruebas unitarias Geolocalización |  | 4h | 2023-03-31 09:00 | 2023-03-31 13:00 | 44 |  |  | 1.75d | 1.5d | start no earlier than 2022-12-06 09:00 | Banco BDI; Experto Integraciones | 8h |  |
| 46 | 1.2.1.14 | **Certificación** |  | 5d? | 2023-04-11 09:00 | 2023-04-17 19:00 |  |  |  | 0.25d |  |  |  | 62h |  |
| 47 | 1.2.1.14.1 | Ajustes a plan de certificación |  | 2h | 2023-04-11 09:00 | 2023-04-11 11:00 | 39, 45 |  |  | 0.25d | 0d | start no earlier than 2023-03-28 09:00 | SS_Experto Técnico | 2h |  |
| 48 | 1.2.1.14.2 | Envío de de acta de aprobación del guion de certificación | milestone | 0d | 2023-04-11 11:00 | 2023-04-11 11:00 | 47 |  |  | 0.25d | 0d | start no earlier than 2023-02-06 09:00 | SS_Experto Técnico |  |  |
| 49 | 1.2.1.14.3 | Aprobación del plan de certificación |  | 1d | 2023-04-11 11:00 | 2023-04-12 11:00 | 48 |  |  | 0.25d | 0d | start no earlier than 2022-11-30 09:00 | Banco BDI | 8h |  |
| 50 | 1.2.1.14.4 | Realizar certificación |  | 3d | 2023-04-12 11:00 | 2023-04-17 11:00 | 49 |  |  | 6.5d |  | start no earlier than 2023-03-30 09:00 | Banco BDI | 24h |  |
| 51 | 1.2.1.14.5 | Apoyo en certificación de datos |  | 12h | 2023-04-12 11:00 | 2023-04-13 17:00 | 49 |  |  | 0.25d |  | start no earlier than 2022-11-30 09:00 | SS_Experto Técnico | 12h |  |
| 52 | 1.2.1.14.6 | Ajustes |  | 8h | 2023-04-14 09:00 | 2023-04-14 19:00 | 51 |  |  | 0d |  | start no earlier than 2023-04-14 09:00 | SS_Experto Técnico | 8h |  |
| 53 | 1.2.1.14.7 | Envío de acta de certificación finalizada | milestone | 0d | 2023-04-14 19:00 | 2023-04-14 19:00 | 52 |  |  | 0d |  | start no earlier than 2023-02-10 09:00 | SS_Experto Técnico |  |  |
| 54 | 1.2.1.14.8 | Aprobación de la certificación |  | 1d? | 2023-04-17 09:00 | 2023-04-17 19:00 | 53 |  |  | 0d |  |  | Banco BDI | 8h |  |
| 55 | 1.2.1.15 | Ambiente pruebas completado y certificado | milestone | 0h | 2023-04-17 19:00 | 2023-04-17 19:00 | 54 |  |  | 0d |  | start no earlier than 2022-11-04 09:00 |  |  |  |
| 56 | 1.2.1.16 | Control de Calidad - Inspección Instalación Aplicativo |  | 0.5h | 2023-04-18 09:00 | 2023-04-18 09:30 | 55 |  |  | 5.69d |  |  | SS - Calidad | 0.5h |  |

| ID | WBS | Task | Type | Duration | Start | Finish | Predecessors | Complete | Remaining | Total slack | Free slack | Constraint | Resources | Work | Actual work |
| --- | --- | --- | --- | --- | --- | --- | --- | --- | --- | --- | --- | --- | --- | --- | --- |
| 57 | 1.2.1.17 | **Documentación** |  | 2.5d | 2023-03-21 09:00 A | 2023-03-23 13:00 |  | 94% | 0.15d | 18.25d |  |  |  | 8h | 8h |
| 58 | 1.2.1.17.1 | Definición de documentación requerida |  | 1d | 2023-03-21 09:00 A | 2023-03-21 19:00 A | 37, 38 | 100% |  |  |  | start no earlier than 2022-12-08 09:00 | Banco BDI | 8h | 8h |
| 59 | 1.2.1.17.2 | Construcción documentación requerida |  | 12h | 2023-03-22 09:00 A | 2023-03-23 13:00 | 58 | 90% | 1.2h | 18.25d |  |  |  |  |  |
| 60 | 1.2.1.18 | Realizar backup de la Base de Datos Sentinel ambiente de Desarrollo |  | 1d? | 2023-04-18 09:00 | 2023-04-18 19:00 | 55 |  |  | 4.75d |  |  | Banco BDI | 8h |  |
| 61 | 1.2.2 | **AMBIENTE PRODUCCION** |  | 41.75d? | 2023-02-20 09:00 | 2023-04-25 17:00 |  |  |  | 0d |  |  |  | 99h |  |
| 62 | 1.2.2.1 | Desarrollo de procesos de extracción y réplica a BD Intermedia |  | 1d? | 2023-02-20 09:00 | 2023-02-20 19:00 | 26 |  |  | 33d |  | finish no earlier than 2023-02-15 19:00 | Banco BDI | 8h |  |
| 63 | 1.2.2.2 | Otorgar accesos |  | 1d | 2023-04-18 09:00 | 2023-04-18 19:00 | 55 |  |  | 0d |  | start no earlier than 2022-11-25 09:00 | Banco BDI | 8h |  |
| 64 | 1.2.2.3 | Revisión del ambiente |  | 2h | 2023-04-19 09:00 | 2023-04-19 11:00 | 14, 63, 38 |  |  | 0d |  |  | SS_Experto Técnico | 2h |  |
| 65 | 1.2.2.4 | Envío de Checklist de pase a producción | milestone | 0d | 2023-04-19 11:00 | 2023-04-19 11:00 | 64 |  |  | 4.5d |  |  |  |  |  |
| 66 | 1.2.2.5 | Validación de control de cambios y plan de Roll-back |  | 1d | 2023-04-18 09:00 | 2023-04-18 19:00 | 55 |  |  | 4.75d |  | start no earlier than 2022-11-25 09:00 | Banco BDI | 8h |  |
| 67 | 1.2.2.6 | Carga de nuevos valores en repositorio intermedio |  | 1d | 2023-04-18 09:00 | 2023-04-18 19:00 | 55 |  |  | 4.75d |  | start no earlier than 2022-11-25 09:00 | Banco BDI | 8h |  |
| 68 | 1.2.2.7 | Respaldo de BD productiva |  | 1d | 2023-04-18 09:00 | 2023-04-18 19:00 | 55 |  |  | 4.75d |  | start no earlier than 2022-11-25 09:00 | Banco BDI | 8h |  |
| 69 | 1.2.2.8 | Instalación y configuración Geolocalización |  | 4h | 2023-04-19 11:00 | 2023-04-19 17:00 | 64 |  |  | 0d |  | finish no earlier than 2022-08-17 17:00 | Banco BDI; Experto Integraciones | 8h |  |
| 70 | 1.2.2.9 | Apoyo pase a producción |  | 8h | 2023-04-19 17:00 | 2023-04-20 17:00 | 69 |  |  | 0d |  | start no earlier than 2022-11-07 09:00 | Banco BDI; SS_Experto Técnico | 16h |  |
| 71 | 1.2.2.10 | Envío de acta de aprobación de pase a producción | milestone | 0d | 2023-04-20 17:00 | 2023-04-20 17:00 | 70 |  |  | 0d |  | start no earlier than 2022-11-07 09:00 | SS_Experto Técnico |  |  |
| 72 | 1.2.2.11 | Aprobación del pase a producción |  | 1d? | 2023-04-20 17:00 | 2023-04-21 17:00 | 71 |  |  | 0d |  | start no earlier than 2022-11-08 09:00 | Banco BDI | 8h |  |
| 73 | 1.2.2.12 | Pase a producción finalizado | milestone | 0h | 2023-04-21 17:00 | 2023-04-21 17:00 | 72 |  |  | 0d |  | start no earlier than 2022-11-07 09:00 |  |  |  |
| 74 | 1.2.2.13 | Seguimiento verificación de datos |  | 2h | 2023-04-20 17:00 | 2023-04-20 19:00 | 70 |  |  | 2.56d | 1d | finish no earlier than 2022-11-23 19:00 | SS_Experto Técnico | 2h |  |
| 75 | 1.2.2.14 | Apoyo en definición nuevos modelos de alertamiento |  | 4h | 2023-04-21 17:00 | 2023-04-24 11:00 | 73 |  |  | 0d |  | start no earlier than 2022-11-07 09:00 | SS_Experto Técnico | 4h |  |
| 76 | 1.2.2.15 | Configuración nuevos modelos de alertamiento |  | 12h | 2023-04-24 11:00 | 2023-04-25 17:00 | 75 |  |  | 0d |  | finish no earlier than 2023-02-21 19:00 | SS_Experto Técnico | 12h |  |
| 77 | 1.2.2.16 | Coordinar presentación en CPP |  | 1h | 2023-04-18 09:00 | 2023-04-18 10:00 | 55 |  |  | 5.62d |  | start no earlier than 2022-11-04 09:00 | SS_Experto Técnico | 1h |  |
| 78 | 1.2.2.17 | Seguimiento y control del proyecto |  | 6h | 2023-04-21 17:00 | 2023-04-24 13:00 | 73 |  |  | 1.25d |  | start no earlier than 2022-11-07 09:00 | SS_PM | 6h |  |
| 79 | 1.3 | **CIERRE** |  | 0.44d | 2023-04-21 17:00 | 2023-04-24 10:30 |  |  |  | 1.56d |  |  |  | 3.5h |  |
| 80 | 1.3.1 | Preparación de documentación de cierre y entregables |  | 2h | 2023-04-21 17:00 | 2023-04-21 19:00 | 73 |  |  | 1.56d | 0d | start no earlier than 2022-11-01 09:00 | SS_Experto Técnico | 2h |  |
| 81 | 1.3.2 | Envío de acta de entrega de medios y acta de aprobación | milestone | 0d | 2023-04-21 19:00 | 2023-04-21 19:00 | 80, 74, 52 |  |  | 1.56d | 0d | start no earlier than 2022-11-10 09:00 | SS_Experto Técnico |  |  |
| 82 | 1.3.3 | Reunión cierre |  | 1h | 2023-04-24 09:00 | 2023-04-24 10:00 | 81 |  |  | 1.56d | 0d | start no earlier than 2022-11-11 09:00 | SS_PM | 1h |  |
| 83 | 1.3.4 | Control de Calidad - Inspección Entrega Customer Care y cierre |  | 0.5h | 2023-04-24 10:00 | 2023-04-24 10:30 | 82 |  |  | 1.56d |  | start no earlier than 2022-11-07 09:00 | SS - Calidad | 0.5h |  |
